# 软件开发

Schedule from MS Project, 2019-03-29 to 2019-08-09.

## Calendars

- 标准: Mon-Fri 08:00-12:00, 13:00-17:00; Sat-Sun off.

## Resources

| Resource |
| --- |
| 管理人员 |
| 项目经理 |
| 分析人员 |
| 开发人员 |
| 测试人员 |
| 培训人员 |
| 技术联络人员 |
| 部署小组 |

## Schedule

| ID | WBS | Task | Type | Duration | Start | Finish | Predecessors | Total slack | Resources | Work |
| --- | --- | --- | --- | --- | --- | --- | --- | --- | --- | --- |
| 1 | 1 | **项目范围规划** |  | 3.5d | 2019-03-29 | 2019-04-03 |  | 0d |  | 28h |
| 2 | 1.1 | 确定项目范围 |  | 4h | 2019-03-29 | 2019-03-29 |  | 0d | 管理人员 | 4h |
| 3 | 1.2 | 获得项目所需资金 |  | 1d | 2019-03-29 | 2019-04-01 | 2 | 0d | 管理人员 | 8h |
| 4 | 1.3 | 定义预备资源 |  | 1d | 2019-04-01 | 2019-04-02 | 3 | 0d | 项目经理 | 8h |
| 5 | 1.4 | 获得核心资源 |  | 1d | 2019-04-02 | 2019-04-03 | 4 | 0d | 项目经理 | 8h |
| 6 | 1.5 | 项目范围规划完成 | milestone | 0d | 2019-04-03 | 2019-04-03 | 5 | 0d |  |  |
| 7 | 2 | **分析/软件需求** |  | 14d | 2019-04-03 | 2019-04-23 |  | 0d |  | 120h |
| 8 | 2.1 | 行为需求分析 |  | 5d | 2019-04-03 | 2019-04-10 | 6 | 0d | 分析人员 | 40h |
| 9 | 2.2 | 起草初步的软件规范 |  | 3d | 2019-04-10 | 2019-04-15 | 8 | 0d | 分析人员 | 24h |
| 10 | 2.3 | 制定初步预算 |  | 2d | 2019-04-15 | 2019-04-17 | 9 | 0d | 项目经理 | 16h |
| 11 | 2.4 | 工作组共同审阅软件规范/预算 |  | 4h | 2019-04-17 | 2019-04-17 | 10 | 0d | 项目经理; 分析人员 | 8h |
| 12 | 2.5 | 根据反馈修改软件规范 |  | 1d | 2019-04-18 | 2019-04-18 | 11 | 0d | 分析人员 | 8h |
| 13 | 2.6 | 确定交付期限 |  | 1d | 2019-04-19 | 2019-04-19 | 12 | 0d | 项目经理 | 8h |
| 14 | 2.7 | 获得开展后续工作的批准(概念、期限和预算) |  | 4h | 2019-04-22 | 2019-04-22 | 13 | 0d | 管理人员; 项目经理 | 8h |
| 15 | 2.8 | 获得所需资源 |  | 1d | 2019-04-22 | 2019-04-23 | 14 | 0d | 项目经理 | 8h |
| 16 | 2.9 | 分析工作完成 | milestone | 0d | 2019-04-23 | 2019-04-23 | 15 | 0d |  |  |
| 17 | 3 | **设计** |  | 14.5d | 2019-04-23 | 2019-05-13 |  | 0d |  | 120h |
| 18 | 3.1 | 审阅初步的软件规范 |  | 2d | 2019-04-23 | 2019-04-25 | 16 | 0d | 分析人员 | 16h |
| 19 | 3.2 | 制定功能规范 |  | 5d | 2019-04-25 | 2019-05-02 | 18 | 0d | 分析人员 | 40h |
| 20 | 3.3 | 根据功能规范开发原型 |  | 4d | 2019-05-02 | 2019-05-08 | 19 | 0d | 分析人员 | 32h |
| 21 | 3.4 | 审阅功能规范 |  | 2d | 2019-05-08 | 2019-05-10 | 20 | 0d | 管理人员 | 16h |
| 22 | 3.5 | 根据反馈修改功能规范 |  | 1d | 2019-05-10 | 2019-05-13 | 21 | 0d | 管理人员 | 8h |
| 23 | 3.6 | 获得开展后续工作的批准 |  | 4h | 2019-05-13 | 2019-05-13 | 22 | 0d | 管理人员; 项目经理 | 8h |
| 24 | 3.7 | 设计工作完成 | milestone | 0d | 2019-05-13 | 2019-05-13 | 23 | 0d |  |  |

| ID | WBS | Task | Type | Duration | Start | Finish | Predecessors | Total slack | Free slack | Resources | Work |
| --- | --- | --- | --- | --- | --- | --- | --- | --- | --- | --- | --- |
| 25 | 4 | **开发** |  | 21.75d | 2019-05-14 | 2019-06-12 |  | 0d |  |  | 264h |
| 26 | 4.1 | 审阅功能规范 |  | 1d | 2019-05-14 | 2019-05-14 | 24 | 0d |  | 开发人员 | 8h |
| 27 | 4.2 | 确定模块化/分层设计参数 |  | 1d | 2019-05-15 | 2019-05-15 | 26 | 0d |  | 开发人员 | 8h |
| 28 | 4.3 | 分派任务给开发人员 |  | 1d | 2019-05-16 | 2019-05-16 | 27 | 0d |  | 开发人员 | 8h |
| 29 | 4.4 | 编写代码 |  | 15d | 2019-05-17 | 2019-06-06 | 28 | 0d |  | 开发人员 | 120h |
| 30 | 4.5 | 开发人员测试(初步调试) |  | 15d | 2019-05-22 | 2019-06-12 | 29FS-7.5% | 0d |  | 开发人员 | 120h |
| 31 | 4.6 | 开发工作完毕 | milestone | 0d | 2019-06-12 | 2019-06-12 | 30 | 0d |  |  |  |
| 32 | 5 | **测试** |  | 48.75d | 2019-05-14 | 2019-07-19 |  | 15d |  |  | 280h |
| 33 | 5.1 | 根据产品规范制定单元测试计划 |  | 4d | 2019-05-14 | 2019-05-17 | 24 | 17.75d |  | 测试人员 | 32h |
| 34 | 5.2 | 根据产品规范制定整体测试计划 |  | 4d | 2019-05-14 | 2019-05-17 | 24 | 59.75d |  | 测试人员 | 32h |
| 35 | 5.3 | **单元测试** |  | 15d | 2019-06-12 | 2019-07-03 |  | 0d |  |  | 120h |
| 36 | 5.3.1 | 审阅模块化代码 |  | 5d | 2019-06-12 | 2019-06-19 | 33, 31 | 0d |  | 测试人员 | 40h |
| 37 | 5.3.2 | 测试组件模块是否符合产品规范 |  | 2d | 2019-06-19 | 2019-06-21 | 31, 36 | 0d |  | 测试人员 | 16h |
| 38 | 5.3.3 | 找出不符合产品规范的异常情况 |  | 3d | 2019-06-21 | 2019-06-26 | 37 | 0d |  | 测试人员 | 24h |
| 39 | 5.3.4 | 修改代码 |  | 3d | 2019-06-26 | 2019-07-01 | 38 | 0d |  | 测试人员 | 24h |
| 40 | 5.3.5 | 重新测试经过修改的代码 |  | 2d | 2019-07-01 | 2019-07-03 | 39 | 0d |  | 测试人员 | 16h |
| 41 | 5.3.6 | 单元测试完成 | milestone | 0d | 2019-07-03 | 2019-07-03 | 40 | 0d |  |  |  |
| 42 | 5.4 | **整体测试** |  | 12d | 2019-07-03 | 2019-07-19 |  | 0d |  |  | 96h |
| 43 | 5.4.1 | 测试模块集成情况 |  | 5d | 2019-07-03 | 2019-07-10 | 41 | 0d |  | 测试人员 | 40h |
| 44 | 5.4.2 | 找出不符合规范的异常情况 |  | 2d | 2019-07-10 | 2019-07-12 | 43 | 0d |  | 测试人员 | 16h |
| 45 | 5.4.3 | 修改代码 |  | 3d | 2019-07-12 | 2019-07-17 | 44 | 0d |  | 测试人员 | 24h |
| 46 | 5.4.4 | 重新测试经过修改的代码 |  | 2d | 2019-07-17 | 2019-07-19 | 45 | 0d |  | 测试人员 | 16h |
| 47 | 5.4.5 | 整体测试完成 | milestone | 0d | 2019-07-19 | 2019-07-19 | 46 | 0d |  |  |  |
| 48 | 6 | **培训** |  | 45.75d | 2019-05-14 | 2019-07-16 |  | 3d |  |  | 256h |
| 49 | 6.1 | 制定针对最终用户的培训规范 |  | 3d | 2019-05-14 | 2019-05-16 | 24 | 21.75d | 18.75d | 培训人员 | 24h |
| 50 | 6.2 | 制定针对产品技术支持人员的培训规范 |  | 3d | 2019-05-14 | 2019-05-16 | 24 | 21.75d | 18.75d | 培训人员 | 24h |
| 51 | 6.3 | 确定培训方法(基于计算机的培训、教室授课等) |  | 2d | 2019-05-14 | 2019-05-15 | 24 | 22.75d | 19.75d | 培训人员 | 16h |
| 52 | 6.4 | 编写培训材料 |  | 3w | 2019-06-12 | 2019-07-03 | 49, 31, 50, 51 | 3d | 0d | 培训人员 | 120h |
| 53 | 6.5 | 研究培训材料的可用性 |  | 4d | 2019-07-03 | 2019-07-09 | 52 | 3d | 0d | 培训人员 | 32h |
| 54 | 6.6 | 对培训材料进行最后处理 |  | 3d | 2019-07-09 | 2019-07-12 | 53 | 3d | 0d | 培训人员 | 24h |
| 55 | 6.7 | 制定培训机制 |  | 2d | 2019-07-12 | 2019-07-16 | 54 | 3d | 0d | 培训人员 | 16h |
| 56 | 6.8 | 培训材料完成 | milestone | 0d | 2019-07-16 | 2019-07-16 | 55 | 3d |  |  |  |

| ID | WBS | Task | Type | Duration | Start | Finish | Predecessors | Total slack | Free slack | Resources | Work |
| --- | --- | --- | --- | --- | --- | --- | --- | --- | --- | --- | --- |
| 57 | 7 | **文档** |  | 30.5d | 2019-05-14 | 2019-06-25 |  | 18.25d |  |  | 336h |
| 58 | 7.1 | 制定“帮助”规范 |  | 1d | 2019-05-14 | 2019-05-14 | 24 | 27.75d | 9.5d | 技术联络人员 | 8h |
| 59 | 7.2 | 开发“帮助”系统 |  | 3w | 2019-05-28 | 2019-06-18 | 58, 29FS-5% | 18.25d | 0d | 技术联络人员 | 120h |
| 60 | 7.3 | 审阅“帮助”文档 |  | 3d | 2019-06-18 | 2019-06-21 | 59 | 18.25d | 0d | 技术联络人员 | 24h |
| 61 | 7.4 | 根据反馈修改“帮助”文档 |  | 2d | 2019-06-21 | 2019-06-25 | 60 | 18.25d | 0d | 技术联络人员 | 16h |
| 62 | 7.5 | 制定用户手册规范 |  | 2d | 2019-05-14 | 2019-05-15 | 24 | 27.75d | 8.5d | 技术联络人员 | 16h |
| 63 | 7.6 | 编写用户手册 |  | 3w | 2019-05-28 | 2019-06-18 | 62, 29FS-5% | 19.25d | 0d | 技术联络人员 | 120h |
| 64 | 7.7 | 审阅所有的用户文档 |  | 2d | 2019-06-18 | 2019-06-20 | 63 | 19.25d | 0d | 技术联络人员 | 16h |
| 65 | 7.8 | 根据反馈修改用户文档 |  | 2d | 2019-06-20 | 2019-06-24 | 64 | 19.25d | 1d | 技术联络人员 | 16h |
| 66 | 7.9 | 文档完成 | milestone | 0d | 2019-06-25 | 2019-06-25 | 65, 61 | 18.25d |  |  |  |
| 67 | 8 | **试生产** |  | 70.25d | 2019-04-23 | 2019-07-30 |  | 0d |  |  | 64h |
| 68 | 8.1 | 确定测试群体 |  | 1d | 2019-04-23 | 2019-04-24 | 16 | 61.25d | 0d | 项目经理 | 8h |
| 69 | 8.2 | 确定软件分发机制 |  | 1d | 2019-04-24 | 2019-04-25 | 68 | 61.25d |  |  |  |
| 70 | 8.3 | 安装/部署软件 |  | 1d | 2019-07-19 | 2019-07-22 | 47, 69, 66, 56 | 0d |  | 部署小组 | 8h |
| 71 | 8.4 | 获得用户反馈 |  | 1w | 2019-07-22 | 2019-07-29 | 70 | 0d |  | 部署小组 | 40h |
| 72 | 8.5 | 评估测试信息 |  | 1d | 2019-07-29 | 2019-07-30 | 71 | 0d |  | 部署小组 | 8h |
| 73 | 8.6 | 试生产工作完成 | milestone | 0d | 2019-07-30 | 2019-07-30 | 72 | 0d |  |  |  |
| 74 | 9 | **部署** |  | 5d | 2019-07-30 | 2019-08-06 |  | 0d |  |  | 40h |
| 75 | 9.1 | 确定最终部署策略 |  | 1d | 2019-07-30 | 2019-07-31 | 73 | 0d |  | 部署小组 | 8h |
| 76 | 9.2 | 确定部署方法 |  | 1d | 2019-07-31 | 2019-08-01 | 75 | 0d |  | 部署小组 | 8h |
| 77 | 9.3 | 获得部署所需资源 |  | 1d | 2019-08-01 | 2019-08-02 | 76 | 0d |  | 部署小组 | 8h |
| 78 | 9.4 | 培训技术支持人员 |  | 1d | 2019-08-02 | 2019-08-05 | 77 | 0d |  | 部署小组 | 8h |
| 79 | 9.5 | 部署软件 |  | 1d | 2019-08-05 | 2019-08-06 | 78 | 0d |  | 部署小组 | 8h |
| 80 | 9.6 | 部署工作完成 | milestone | 0d | 2019-08-06 | 2019-08-06 | 79 | 0d |  |  |  |

| ID | WBS | Task | Type | Duration | Start | Finish | Predecessors | Total slack | Resources | Work |
| --- | --- | --- | --- | --- | --- | --- | --- | --- | --- | --- |
| 81 | 10 | **实施工作结束后的回顾** |  | 3d | 2019-08-06 | 2019-08-09 |  | 0d |  | 24h |
| 82 | 10.1 | 将经验教训记录存档 |  | 1d | 2019-08-06 | 2019-08-07 | 80 | 0d | 项目经理 | 8h |
| 83 | 10.2 | 分发给工作组成员 |  | 1d | 2019-08-07 | 2019-08-08 | 82 | 0d | 项目经理 | 8h |
| 84 | 10.3 | 建立软件维护小组 |  | 1d | 2019-08-08 | 2019-08-09 | 83 | 0d | 项目经理 | 8h |
| 85 | 10.4 | 回顾完成 | milestone | 0d | 2019-08-09 | 2019-08-09 | 84 | 0d |  |  |
| 86 | 11 | 软件开发模板结束 | milestone | 0d | 2019-08-09 | 2019-08-09 | 85 | 0d |  |  |
